Schedule from MS Project, 2024-10-07 to 2025-01-14, status date 2024-12-09, costs in $, A marks actual dates.

## Calendars

- Standard: Mon-Wed 08:00-13:00, 14:00-18:00; Thu-Fri off; Sat-Sun 08:00-13:00, 14:00-18:00. Exceptions (off unless hours are given): 2024-12-20 (shab yalda).

## Resources

| Resource | Rate | Cost per use |
| --- | --- | --- |
| Shahzad | 150 | 50 |
| Saeid | 250 | 75 |
| Armita | 250 | 100 |
| Amir Mohammad | 200 | 50 |
| Laptop |  |  |
| Android phone |  |  |
| Internet |  |  |

## Schedule

| ID | WBS | Task | Type | Duration | Start | Finish | Predecessors | Complete | Remaining | Actual start | Baseline start | Baseline finish | Baseline duration | Total slack | Constraint | Resources | Work | Actual work | Cost | Actual cost |
| --- | --- | --- | --- | --- | --- | --- | --- | --- | --- | --- | --- | --- | --- | --- | --- | --- | --- | --- | --- | --- |
| 1 | 1 | **پروژه ساخت اپلیکیشن اندروید** |  | 70.75d | 2024-10-20 | 2025-01-14 |  | 94% | 4.49d | 2024-10-07 | 2024-10-07 | 2025-01-21 | 86.5d |  |  |  | 309.5h | 274.5h | 66,462.5 | 59,425 |
| 2 | 1.1 | **تحلیل و بررسی نیازمندی‌ها** |  | 6d | 2024-10-07 A | 2024-10-14 A |  | 100% |  |  | 2024-10-07 | 2024-10-15 | 7d |  |  |  | 40h | 40h | 9,362.5 | 9,362.5 |
| 3 | 1.1.1 | بررسی هدف اصلی پروژه و جمعآوری نیازمندیها |  | 4d | 2024-10-07 A | 2024-10-12 A |  | 100% |  |  | 2024-10-07 | 2024-10-12 | 4d |  |  | Amir Mohammad [50%]; Armita [50%] | 32h | 32h | 7,275 | 7,275 |
| 4 | 1.1.2 | مستندسازی نیازمندیها و تعیین مشخصات کلیدی بازی |  | 2d | 2024-10-12 A | 2024-10-14 A | 3 | 100% |  |  | 2024-10-12 | 2024-10-15 | 3d |  |  | Saeid [50%]; Armita [50%] | 8h | 8h | 2,087.5 | 2,087.5 |
| 5 | 1.2 | **طراحی اولیه و آماده‌سازی محیط توسعه** |  | 6d | 2024-10-07 A | 2024-10-14 A |  | 100% |  |  | 2024-10-07 | 2024-10-15 | 7d |  |  |  | 24h | 24h | 4,050 | 4,050 |
| 6 | 1.2.1 | طراحی اولیه رابط کاربری بازی |  | 4d | 2024-10-07 A | 2024-10-12 A | 2SS | 100% |  |  | 2024-10-07 | 2024-10-12 | 4d |  |  | Shahzad [50%] | 16h | 16h | 2,425 | 2,425 |
| 7 | 1.2.2 | ایجاد محیط توسعه و نصب ابزارهای مورد نیاز برای برنامهنویسی اندروید |  | 2d | 2024-10-12 A | 2024-10-14 A | 6 | 100% |  |  | 2024-10-12 | 2024-10-15 | 3d |  |  | Amir Mohammad [50%] | 8h | 8h | 1,625 | 1,625 |
| 8 | 1.3 | **توسعه و پیاده‌سازی بازی** |  | 15d | 2024-10-15 A | 2024-11-03 A |  | 100% |  |  | 2024-10-15 | 2024-11-04 | 16d |  |  |  | 60h | 60h | 13,662.5 | 13,662.5 |
| 9 | 1.3.1 | پیادهسازی منطق اصلی بازی شامل کنترل راکت و نحوه برخورد توپ با راکت |  | 8d | 2024-10-15 A | 2024-10-26 A | 7 | 100% |  |  | 2024-10-15 | 2024-10-26 | 8d |  |  | Saeid [50%] | 32h | 32h | 8,037.5 | 8,037.5 |
| 10 | 1.3.2 | پیادهسازی کنترلهای حرکتی با استفاده از سنسورهای شتابسنج و ژیروسکوپ |  | 7d | 2024-10-26 A | 2024-11-03 A | 9, 7 | 100% |  |  | 2024-10-26 | 2024-11-04 | 8d |  |  | Amir Mohammad [50%] | 28h | 28h | 5,625 | 5,625 |
| 11 | 1.4 | **طراحی رابط کاربری و عناصر گرافیکی** |  | 10d | 2024-11-04 A | 2024-11-17 A |  | 100% |  |  | 2024-11-04 | 2024-11-12 | 7d |  |  |  | 40h | 40h | 8,075 | 8,075 |
| 12 | 1.4.1 | طراحی رابط کاربری نهایی و افزودن عناصر گرافیکی مانند پسزمینه و آیکونها |  | 5d | 2024-11-04 A | 2024-11-10 A | 10, 7 | 100% |  |  | 2024-11-04 | 2024-11-10 | 5d |  |  | Armita [50%] | 20h | 20h | 5,050 | 5,050 |
| 13 | 1.4.2 | بهینهسازی طراحیها برای عملکرد بهتر و روانی بیشتر |  | 5d | 2024-11-10 A | 2024-11-17 A | 12 | 100% |  |  | 2024-11-10 | 2024-11-12 | 2d |  |  | Shahzad [50%] | 20h | 20h | 3,025 | 3,025 |
| 14 | 1.5 | **اجرای تست‌های عملکردی و کاربردی** |  | 7d | 2024-11-12 A | 2024-11-20 A |  | 100% |  |  | 2024-11-12 | 2024-11-20 | 7d |  |  |  | 40h | 40h | 8,862.5 | 8,862.5 |
| 15 | 1.5.1 | اجرای تستهای جامع روی بازی شامل تستهای حرکتی و عملکردی |  | 4d | 2024-11-12 A | 2024-11-19 A | 13 | 100% |  |  | 2024-11-12 | 2024-11-13 | 1d |  |  | Saeid [50%] | 16h | 16h | 4,037.5 | 4,037.5 |
| 16 | 1.5.2 | شناسایی و رفع اشکالات احتمالی |  | 6d | 2024-11-13 A | 2024-11-20 A | 15, 13 | 100% |  |  | 2024-11-13 | 2024-11-20 | 6d |  |  | Amir Mohammad [50%] | 24h | 24h | 4,825 | 4,825 |
| 17 | 1.6 | **بهینه‌سازی عملکرد بازی** |  | 8d | 2024-11-20 A | 2024-12-01 A |  | 100% |  |  | 2024-11-20 | 2024-12-01 | 7d |  |  |  | 40h | 40h | 9,112.5 | 9,112.5 |
| 18 | 1.6.1 | بهبود فریم ریت، کاهش مصرف باتری و افزایش کارایی بازی |  | 5d | 2024-11-20 A | 2024-11-27 A | 8, 11, 16, 13 | 100% |  |  | 2024-11-20 | 2024-11-25 | 3d |  |  | Amir Mohammad [50%] | 20h | 20h | 4,025 | 4,025 |
| 19 | 1.6.2 | استفاده از ابزارهای پروفایلینگ برای شناسایی نقاط ضعف |  | 5d | 2024-11-25 A | 2024-12-01 A | 18 | 100% |  |  | 2024-11-25 | 2024-12-01 | 4d |  |  | Armita [50%]; Saeid [50%] | 20h | 20h | 5,087.5 | 5,087.5 |
| 20 | 1.7 | **مستندسازی پروژه** |  | 5d | 2024-12-01 A | 2024-12-07 A |  | 100% |  |  | 2024-12-01 | 2024-12-17 | 14d |  |  |  | 20h | 20h | 4,275 | 4,275 |
| 21 | 1.7.1 | تهیه مستندات فنی شامل توضیحات کد و معماری پروژه |  | 2d | 2024-12-01 A | 2024-12-02 A | 19 | 100% |  |  | 2024-12-01 | 2024-12-11 | 10d |  |  | Shahzad [50%] | 8h | 8h | 1,225 | 1,225 |
| 22 | 1.7.2 | نوشتن راهنمای استفاده از بازی برای کاربران نهایی |  | 3d | 2024-12-02 A | 2024-12-07 A | 21 | 100% |  |  | 2024-12-14 | 2024-12-17 | 4d |  |  | Armita [50%] | 12h | 12h | 3,050 | 3,050 |
| 23 | 1.8 | **ارائه نسخه اولیه و ارزیابی نهایی** |  | 7d | 2024-12-07 A | 2024-12-15 |  | 38% | 4.38d |  | 2024-12-17 | 2024-12-30 | 10d | 24.88d |  |  | 45.5h | 10.5h | 9,062.5 | 2,025 |
| 24 | 1.8.1 | ارائه نسخه اولیه بازی برای بازخوردگیری |  | 2d | 2024-12-07 A | 2024-12-09 A | 22, 17, 15 | 100% |  |  | 2024-12-17 | 2024-12-22 | 3d |  |  | Amir Mohammad [50%] | 8h | 8h | 1,625 | 1,625 |
| 25 | 1.8.2 | رفع مشکلات نهایی و آمادهسازی برای انتشار نسخه رسمی |  | 5d | 2024-12-09 A | 2024-12-15 | 24 | 13% | 4.38d |  | 2024-12-22 | 2024-12-30 | 7d | 24.88d |  | Shahzad [50%]; Saeid [50%] | 37.5h | 2.5h | 7,437.5 | 400 |
| 26 | 2 | پایان | milestone | 0d | 2025-01-07 | 2025-01-07 |  |  |  |  | 2025-01-07 | 2025-01-07 | 0d | 6.62d | start no earlier than 2025-01-07 |  |  |  |  |  |
